# SDK 3.2

Schedule from MS Project, 2006-05-16 to 2007-05-16, A marks actual dates.
Ekagra

## Calendars

- Standard: Mon-Fri 08:00-12:00, 13:00-17:00; Sat-Sun off. Exceptions (off unless hours are given): 2006-05-29, 2006-07-04.

## Resources

| Resource |
| --- |
| Denise Warzel |
| Charles Griffin |
| Steven Hunter |
| Avinash |
| JJ Maurer |
| Sharon S. |
| Satish Patel |
| Doug Mason |
| caAdapter Team |
| Dan Dumitru |
| QA |
| V |
| Tech Writing NCICB |
| SDK Users |
| SAIC |

## Schedule

| ID | WBS | Task | Type | Duration | Start | Finish | Predecessors | Complete | Remaining | Total slack | Constraint | Deadline | Resources | Work | Actual work |
| --- | --- | --- | --- | --- | --- | --- | --- | --- | --- | --- | --- | --- | --- | --- | --- |
| 1 | 1 | Project startup | milestone | 0d | 2006-05-23 A | 2006-05-23 A |  | 100% |  |  |  |  |  |  |  |
| 2 | 2 | **Inception** |  | 22d | 2006-05-23 A | 2006-06-22 |  | 99% | 0d | 0d |  |  |  | 600h | 600h |
| 3 | 2.1 | Short term Inception plan |  | 2d | 2006-05-23 A | 2006-05-24 A | 1 | 100% |  |  |  |  | Charles Griffin | 16h | 16h |
| 4 | 2.2 | Project infrastructure set up |  | 2d | 2006-05-23 A | 2006-05-24 A | 3 | 100% |  |  |  |  | Satish Patel; Charles Griffin | 32h | 32h |
| 5 | 2.3 | Transition repository from incumbent team |  | 5d | 2006-05-23 A | 2006-05-30 A | 3 | 100% |  |  |  |  | Satish Patel | 40h | 40h |
| 6 | 2.4 | Scope and requirement review |  | 5d | 2006-05-23 A | 2006-05-30 A | 4 | 100% |  |  |  |  | Avinash; Charles Griffin | 80h | 80h |
| 7 | 2.5 | Project plan development |  | 4d | 2006-05-23 A | 2006-05-26 A | 1 | 100% |  |  |  |  | JJ Maurer; Charles Griffin | 64h | 64h |
| 8 | 2.6 | Project Plan Draft (C1.C1 Draft) | milestone | 0d | 2006-05-26 A | 2006-05-26 A |  | 100% |  |  | start no earlier than 2006-05-26 | 2006-05-26 | JJ Maurer; Charles Griffin |  |  |
| 9 | 2.7 | NCICB review of draft project plan |  | 2d | 2006-05-26 A | 2006-05-30 A | 8 | 100% |  |  |  |  | Avinash; Denise Warzel | 32h | 32h |
| 10 | 2.8 | Requirements analysis and grouping |  | 1d | 2006-05-31 A | 2006-05-31 A | 6 | 100% |  |  |  |  | Charles Griffin; JJ Maurer | 16h | 16h |
| 11 | 2.9 | Schedule Transition Meetings |  | 1d | 2006-06-01 A | 2006-06-01 A | 10 | 100% |  |  |  |  | Charles Griffin; Satish Patel | 16h | 16h |
| 12 | 2.10 | Risk analysis |  | 1d | 2006-06-02 A | 2006-06-02 A | 11 | 100% |  |  |  |  | Charles Griffin | 8h | 8h |
| 13 | 2.11 | Scope document preparation |  | 6d | 2006-06-05 A | 2006-06-12 A | 12 | 100% |  |  |  |  | Charles Griffin | 48h | 48h |
| 14 | 2.12 | Project Plan Final (C1.C1. Final) | milestone | 0d | 2006-06-05 A | 2006-06-05 A |  | 100% |  |  | start no earlier than 2006-06-05 | 2006-06-05 | Charles Griffin |  |  |
| 15 | 2.13 | Overall Iteration plan and schedule |  | 1d | 2006-06-05 A | 2006-06-05 A | 14 | 100% |  |  |  |  | Charles Griffin | 8h | 8h |
| 16 | 2.14 | Scope document Draft |  | 1d | 2006-06-06 A | 2006-06-06 A | 15 | 100% |  |  |  |  | Charles Griffin; Satish Patel | 16h | 16h |
| 17 | 2.15 | QA and internal review |  | 2d | 2006-06-07 A | 2006-06-08 A | 16 | 100% |  |  |  |  | Steven Hunter; JJ Maurer | 32h | 32h |
| 18 | 2.16 | Deliver draft scope document, iteration plan, risk list | milestone | 0d | 2006-06-08 A | 2006-06-08 A | 17 | 100% |  |  |  |  | Charles Griffin |  |  |
| 19 | 2.17 | NCICB review |  | 10d | 2006-06-09 A | 2006-06-22 A | 18 | 100% |  |  |  |  | Avinash; Denise Warzel | 160h | 160h |
| 20 | 2.18 | Transition Checkpoint Review Meeting | milestone | 0d | 2006-06-14 A | 2006-06-14 |  | 50% | 0d | 0d | start no earlier than 2006-06-14 |  | Avinash; JJ Maurer; Charles Griffin; Sharon S. |  |  |
| 21 | 2.19 | Revise scope and iteration plan |  | 3d | 2006-06-14 A | 2006-06-16 A | 20 | 100% |  |  |  |  | Charles Griffin | 24h | 24h |
| 22 | 2.20 | Final scope document |  | 1d | 2006-06-19 A | 2006-06-19 A | 21 | 100% |  |  |  |  | Charles Griffin | 8h | 8h |
| 23 | 3 | **Elaboration** |  | 51d | 2006-06-01 A | 2006-08-11 |  | 25% | 38.09d | 198d |  |  |  | 1186.2h | 334.2h |
| 24 | 3.1 | **Iteration 1** |  | 49d | 2006-06-01 A | 2006-08-09 |  | 30% | 34.42d | 200d |  |  |  | 1014.2h | 334.2h |
| 25 | 3.1.1 | Detailed Plan for Elaboration |  | 1d | 2006-06-06 A | 2006-06-06 A | 15 | 100% |  |  |  |  | Charles Griffin | 8h | 8h |
| 26 | 3.1.2 | Develop Candidate Requirements Document |  | 1d | 2006-06-07 A | 2006-06-07 A | 25 | 100% |  |  |  |  | Charles Griffin | 8h | 8h |

| ID | WBS | Task | Type | Duration | Start | Finish | Predecessors | Complete | Total slack | Free slack | Constraint | Deadline | Resources | Work | Actual work |
| --- | --- | --- | --- | --- | --- | --- | --- | --- | --- | --- | --- | --- | --- | --- | --- |
| 27 | 3.1.3 | **Analysis and requirement gathering/LOEs** |  | 6.75d | 2006-06-01 A | 2006-06-09 A | 10 | 100% |  |  |  |  | Satish Patel | 110.2h | 110.2h |
| 28 | 3.1.3.1 | Exception Handling |  | 1d | 2006-06-01 A | 2006-06-01 A |  | 100% |  |  |  |  | Satish Patel | 8h | 8h |
| 29 | 3.1.3.2 | Meet With caAdapter Team |  | 0.25d | 2006-06-02 A | 2006-06-02 A | 28 | 100% |  |  | start no earlier than 2006-06-01 |  | Charles Griffin [10%]; Satish Patel; caAdapter Team | 4.2h | 4.2h |
| 30 | 3.1.3.3 | caAdapter Support |  | 1d | 2006-06-02 A | 2006-06-05 A | 29 | 100% |  |  |  |  | Satish Patel | 8h | 8h |
| 31 | 3.1.3.4 | Junit Framework |  | 1d | 2006-06-05 A | 2006-06-06 A | 30 | 100% |  |  | start no earlier than 2006-06-05 |  | Satish Patel | 8h | 8h |
| 32 | 3.1.3.5 | Castor XML Serialization |  | 1d | 2006-06-06 A | 2006-06-07 A | 31 | 100% |  |  |  |  | Satish Patel | 8h | 8h |
| 33 | 3.1.3.6 | caCore Dependency Removal |  | 0.5d | 2006-06-07 A | 2006-06-07 A | 32 | 100% |  |  |  |  | Satish Patel | 4h | 4h |
| 34 | 3.1.3.7 | Query Performance |  | 1d | 2006-06-07 A | 2006-06-08 A | 33 | 100% |  |  |  |  | Satish Patel | 8h | 8h |
| 35 | 3.1.3.8 | Identify Technical Document Deliverables |  | 1d | 2006-06-08 A | 2006-06-09 A | 34 | 100% |  |  |  |  | Satish Patel | 8h | 8h |
| 36 | 3.1.4 | Create Scope Document Draft |  | 5d | 2006-06-05 A | 2006-06-09 A |  | 100% |  |  | start no earlier than 2006-06-05 |  | Charles Griffin | 40h | 40h |
| 37 | 3.1.5 | Revised Scope Document Complete | milestone | 0d | 2006-06-13 A | 2006-06-13 A |  | 100% |  |  | start no earlier than 2006-06-13 |  |  |  |  |
| 38 | 3.1.6 | Revise PM Project Plan |  | 6d | 2006-06-12 A | 2006-06-19 A | 36 | 100% |  |  |  |  | Charles Griffin | 48h | 48h |
| 39 | 3.1.7 | Revised PM Project Plan Submitted | milestone | 0d | 2006-06-19 A | 2006-06-19 A |  | 100% |  |  | start no earlier than 2006-06-19 |  |  |  |  |
| 40 | 3.1.8 | Write General Design |  | 6d | 2006-06-09 A | 2006-06-19 A | 35 | 100% |  |  |  |  | Satish Patel | 48h | 48h |
| 41 | 3.1.9 | General Design Doc Posted for Review | milestone | 0d | 2006-06-19 A | 2006-06-19 A |  | 100% |  |  | start no earlier than 2006-06-19 |  |  |  |  |
| 42 | 3.1.10 | UML Model Changes Approved | milestone | 0d | 2006-06-30 A | 2006-06-30 A |  | 100% |  |  | start no earlier than 2006-06-30 |  | Avinash; Denise Warzel |  |  |
| 43 | 3.1.11 | Develop Use Case model and Supp Spec |  | 5d | 2006-06-19 A | 2006-06-26 A | 40 | 100% |  |  |  |  | Satish Patel | 40h | 40h |
| 44 | 3.1.12 | QA and internal review |  | 5d | 2006-06-26 | 2006-07-03 | 43 |  | 226.25d |  |  |  | Charles Griffin | 40h |  |
| 45 | 3.1.13 | Deliver Draft overall Requirements document (C1.C2 draft) | milestone | 0d | 2006-07-13 A | 2006-07-13 A |  | 100% |  |  | start no earlier than 2006-07-13 | 2006-07-14 | Charles Griffin |  |  |
| 46 | 3.1.14 | Develop Test approach |  | 5d | 2006-07-13 | 2006-07-19 | 45 |  | 215d |  |  |  | QA | 40h |  |
| 47 | 3.1.15 | Final 3.2 Scope/Project Plan to Gforge | milestone | 0d | 2006-06-26 A | 2006-06-26 A |  | 100% |  |  | start no earlier than 2006-06-26 |  |  |  |  |
| 48 | 3.1.16 | Deliver Final overall Requirements document (c1.C2 Final) | milestone | 0d | 2006-07-26 | 2006-07-26 | 45FS+10d |  | 14d |  | start no earlier than 2006-06-27 | 2006-08-15 | Charles Griffin |  |  |
| 49 | 3.1.17 | Prepare Designs for integration with NCICB tools |  | 4d | 2006-06-26 A | 2006-06-30 A | 43 | 100% |  |  |  |  | Satish Patel | 32h | 32h |
| 50 | 3.1.18 | Deliver draft design for tool integration (Group 1, C1.C6 Draft) | milestone | 0d | 2006-06-30 A | 2006-06-30 A | 49 | 100% |  |  |  | 2006-08-15 |  |  |  |
| 51 | 3.1.19 | NCICB review |  | 10d | 2006-06-30 | 2006-07-17 | 50 |  | 39.25d | 0d |  |  | Avinash | 80h |  |
| 52 | 3.1.20 | Revise design |  | 5d | 2006-07-17 | 2006-07-24 | 51 |  | 39.25d | 0d |  |  | Satish Patel | 40h |  |
| 53 | 3.1.21 | Deliver Final design for tool integration (Group 1, C1.C6 Final)) | milestone | 0d | 2006-07-31 | 2006-07-31 | 52 |  | 35d |  | start no earlier than 2006-07-31 | 2006-09-15 |  |  |  |

| ID | WBS | Task | Type | Duration | Start | Finish | Predecessors | Total slack | Free slack | Constraint | Deadline | Resources | Work |
| --- | --- | --- | --- | --- | --- | --- | --- | --- | --- | --- | --- | --- | --- |
| 54 | 3.1.22 | **Software Architecture Documentation** |  | 20d | 2006-06-30 | 2006-07-31 |  | 51.25d | 0d |  |  |  | 320h |
| 55 | 3.1.22.1 | **Software Architecture Document - Code Generation** |  | 20d | 2006-06-30 | 2006-07-31 |  | 51.25d |  |  |  |  | 160h |
| 56 | 3.1.22.1.1 | Build process/Design Thick Client Jar |  | 3d | 2006-06-30 | 2006-07-06 | 50 | 127.75d | 0d |  |  | Satish Patel | 24h |
| 57 | 3.1.22.1.2 | Baseline draft build process/thick client jar design | milestone | 0d | 2006-07-06 | 2006-07-06 | 56 | 144.75d |  |  |  |  |  |
| 58 | 3.1.22.1.3 | Code generation framework |  | 15d | 2006-07-06 | 2006-07-27 | 56 | 127.75d | 0d |  |  | Satish Patel | 120h |
| 59 | 3.1.22.1.4 | Baseline draft code generation framework design | milestone | 0d | 2006-07-27 | 2006-07-27 | 58 | 129.75d |  |  |  |  |  |
| 60 | 3.1.22.1.5 | Modeling constraints |  | 2d | 2006-07-27 | 2006-07-31 | 58 | 127.75d | 0d |  |  | Satish Patel | 16h |
| 61 | 3.1.22.1.6 | Baseline draft modeling constraint | milestone | 0d | 2006-07-31 | 2006-07-31 | 60 | 127.75d |  |  |  |  |  |
| 62 | 3.1.22.2 | **Software Architecture Document - Generated System** |  | 20d | 2006-06-30 | 2006-07-31 |  | 51.25d |  |  |  |  | 160h |
| 63 | 3.1.22.2.1 | Exception handling |  | 3d | 2006-06-30 | 2006-07-06 | 50 | 127.75d | 0d |  |  | Dan Dumitru | 24h |
| 64 | 3.1.22.2.2 | Baseline draft exception handling design | milestone | 0d | 2006-07-06 | 2006-07-06 | 63 | 144.75d |  |  |  |  |  |
| 65 | 3.1.22.2.3 | Persistence tier design |  | 3d | 2006-07-06 | 2006-07-11 | 63 | 127.75d | 0d |  |  | Dan Dumitru | 24h |
| 66 | 3.1.22.2.4 | Baseline draft persistence design | milestone | 0d | 2006-07-11 | 2006-07-11 | 65 | 141.75d |  |  |  |  |  |
| 67 | 3.1.22.2.5 | Business tier design |  | 3d | 2006-07-11 | 2006-07-14 | 65 | 127.75d | 0d |  |  | Dan Dumitru | 24h |
| 68 | 3.1.22.2.6 | Baseline draft business tier design | milestone | 0d | 2006-07-14 | 2006-07-14 | 67 | 138.75d |  |  |  |  |  |
| 69 | 3.1.22.2.7 | Service layer design |  | 3d | 2006-07-14 | 2006-07-19 | 67 | 127.75d | 0d |  |  | Dan Dumitru | 24h |
| 70 | 3.1.22.2.8 | Baseline draft service tier design | milestone | 0d | 2006-07-19 | 2006-07-19 | 69 | 135.75d |  |  |  |  |  |
| 71 | 3.1.22.2.9 | Query mechanism design |  | 3d | 2006-07-19 | 2006-07-24 | 69 | 127.75d | 0d |  |  | Dan Dumitru | 24h |
| 72 | 3.1.22.2.10 | Baseline draft query mechanism design | milestone | 0d | 2006-07-24 | 2006-07-24 | 71 | 132.75d |  |  |  |  |  |
| 73 | 3.1.22.2.11 | Security design |  | 2d | 2006-07-24 | 2006-07-26 | 71 | 127.75d | 0d |  |  | Dan Dumitru | 16h |
| 74 | 3.1.22.2.12 | Baseline draft security design | milestone | 0d | 2006-07-26 | 2006-07-26 | 73 | 130.75d |  |  |  |  |  |
| 75 | 3.1.22.2.13 | Writable API design |  | 3d | 2006-07-26 | 2006-07-31 | 73 | 127.75d | 0d |  |  | Dan Dumitru | 24h |
| 76 | 3.1.22.2.14 | Baseline draft writable API design | milestone | 0d | 2006-07-31 | 2006-07-31 | 75 | 127.75d |  |  |  |  |  |
| 77 | 3.1.23 | Deliver Draft Software Design for SDK enhancements (C1.C3 Draft) | milestone | 0d | 2006-07-18 | 2006-07-18 | 57, 64 | 44d | 0d | start no earlier than 2006-07-18 | 2006-09-15 |  |  |
| 78 | 3.1.24 | NCICB review |  | 10d | 2006-07-18 | 2006-07-31 | 77 | 49d | 0d |  |  | Avinash | 80h |
| 79 | 3.1.25 | Revise/Update design |  | 5d | 2006-08-01 | 2006-08-07 | 78 | 49d | 0d |  |  | Dan Dumitru; Satish Patel | 80h |
| 80 | 3.1.26 | Deliver Final Software design for SDK enhancements (Group 2,3) (C1.C3, final) | milestone | 0d | 2006-08-08 | 2006-08-08 | 79 | 49d | 0d | start no earlier than 2006-08-08 | 2006-10-13 |  |  |
| 81 | 3.1.27 | Review/Revise Task Plan |  | 2d | 2006-08-08 | 2006-08-09 | 80 | 198d | 0d |  |  |  |  |

| ID | WBS | Task | Type | Duration | Start | Finish | Predecessors | Total slack | Free slack | Constraint | Resources | Work |
| --- | --- | --- | --- | --- | --- | --- | --- | --- | --- | --- | --- | --- |
| 82 | 3.2 | **Iteration 2** |  | 22d | 2006-07-13 | 2006-08-11 |  | 198d |  |  |  | 172h |
| 83 | 3.2.1 | Test Plan Development Intial Template Draft |  | 15d | 2006-07-13 | 2006-08-02 | 45 | 199.5d | 0d | start no earlier than 2006-06-21 | QA | 120h |
| 84 | 3.2.2 | Test Plan Review |  | 0.5d | 2006-08-03 | 2006-08-03 | 83 | 199.5d | 0d | start no earlier than 2006-07-05 | Charles Griffin; QA; Avinash | 12h |
| 85 | 3.2.3 | Revise test plan |  | 3d | 2006-08-03 | 2006-08-08 | 84 | 199.5d | 0d |  | QA | 24h |
| 86 | 3.2.4 | Test Plan Baselined | milestone | 0d | 2006-08-08 | 2006-08-08 | 85 | 199.5d | 1.5d |  | QA |  |
| 87 | 3.2.5 | Review/Revise Task Plan |  | 2d | 2006-08-10 | 2006-08-11 | 86, 81 | 198d |  |  | Charles Griffin | 16h |
| 88 | 4 | **Construction** |  | 117d | 2006-06-16 | 2006-11-28 |  | 70d |  |  |  | 1992h |
| 89 | 4.1 | **Development** |  | 70.25d | 2006-06-16 | 2006-09-25 |  | 127.75d | 0d |  |  | 736h |
| 90 | 4.1.1 | **Iteration1** |  | 10d | 2006-06-16 | 2006-06-29 |  | 188d |  |  |  | 160h |
| 91 | 4.1.1.1 | Code baselined | milestone | 0d | 2006-06-16 | 2006-06-16 |  | 188d | 0d | start no earlier than 2006-06-16 | Doug Mason |  |
| 92 | 4.1.1.2 | **QA Test** |  | 10d | 2006-06-16 | 2006-06-29 | 91 | 188d |  |  |  | 160h |
| 93 | 4.1.1.2.1 | QA test (Code Separation, 1.4 backward compatability, Hibernate 3.1 Upgrade |  | 10d | 2006-06-16 | 2006-06-29 |  | 188d |  |  | QA | 80h |
| 94 | 4.1.1.2.2 | QA Support |  | 10d | 2006-06-16 | 2006-06-29 |  | 188d |  |  | Doug Mason | 80h |
| 95 | 4.1.2 | **Iteration2** |  | 44.5d | 2006-07-24 | 2006-09-25 |  | 127.75d |  |  |  | 576h |
| 96 | 4.1.2.1 | **Technology Stack Upgrade** |  | 6d | 2006-07-31 | 2006-08-08 | 54 | 127.75d | 0d |  |  | 48h |
| 97 | 4.1.2.1.1 | Design |  | 1d | 2006-07-31 | 2006-08-01 |  | 127.75d | 0d |  | Dan Dumitru | 8h |
| 98 | 4.1.2.1.2 | Code/Unit Test |  | 5d | 2006-08-01 | 2006-08-08 | 97 | 127.75d |  |  | Dan Dumitru | 40h |
| 99 | 4.1.2.2 | **Fix WS ability to retrieve objects which have more than** |  | 13d | 2006-07-24 | 2006-08-10 | 52 | 137.75d | 0d |  |  | 120h |
| 100 | 4.1.2.2.1 | Design |  | 2d | 2006-07-24 | 2006-07-26 |  | 148.75d |  |  | Satish Patel | 16h |
| 101 | 4.1.2.2.2 | Code/Unit Test |  | 13d | 2006-07-24 | 2006-08-10 |  | 137.75d |  |  | Satish Patel | 104h |
| 102 | 4.1.2.3 | **Fix CORESystem.properties not loading on client side** |  | 3.5d | 2006-08-08 | 2006-08-14 |  | 127.75d | 0d |  |  | 28h |
| 103 | 4.1.2.3.1 | Design |  | 0.5d | 2006-08-08 | 2006-08-09 | 96 | 127.75d | 0d |  | Dan Dumitru | 4h |
| 104 | 4.1.2.3.2 | Code/Unit Test |  | 3d | 2006-08-09 | 2006-08-14 | 103 | 127.75d |  |  | Dan Dumitru | 24h |
| 105 | 4.1.2.4 | **Performance Bench Marking/Improvements (Run Time)/Massive Query Defect** |  | 14.5d | 2006-08-10 | 2006-08-31 | 99 | 137.75d | 0d |  |  | 84h |
| 106 | 4.1.2.4.1 | Define Approach/Documentation |  | 1d | 2006-08-10 | 2006-08-11 |  | 137.75d | 0d |  | Satish Patel | 8h |
| 107 | 4.1.2.4.2 | Perform Benchmarking |  | 5d | 2006-08-11 | 2006-08-18 | 106 | 137.75d | 0d |  | Satish Patel | 40h |
| 108 | 4.1.2.4.3 | Define Resolution Strategy |  | 3d | 2006-08-18 | 2006-08-23 | 107 | 137.75d | 0d |  | Satish Patel | 24h |
| 109 | 4.1.2.4.4 | Review Strategy/Design and Decide upon 3.2 fixes |  | 0.5d | 2006-08-23 | 2006-08-24 | 108 | 137.75d | 0d |  | Avinash; Charles Griffin; Satish Patel | 12h |
| 110 | 4.1.2.4.5 | Implement Fixes |  | 5d | 2006-08-24 | 2006-08-31 | 109 | 137.75d |  |  |  |  |

| ID | WBS | Task | Type | Duration | Start | Finish | Predecessors | Total slack | Free slack | Constraint | Deadline | Resources | Work |
| --- | --- | --- | --- | --- | --- | --- | --- | --- | --- | --- | --- | --- | --- |
| 111 | 4.1.2.5 | **Generate "Thick" Client .jar** |  | 6d | 2006-08-14 | 2006-08-22 | 102 | 127.75d | 0d |  |  |  | 48h |
| 112 | 4.1.2.5.1 | Design |  | 1d | 2006-08-14 | 2006-08-15 |  | 127.75d | 0d |  |  | Dan Dumitru | 8h |
| 113 | 4.1.2.5.2 | Code/Unit Test |  | 5d | 2006-08-15 | 2006-08-22 | 112 | 127.75d |  |  |  | Dan Dumitru | 40h |
| 114 | 4.1.2.6 | **Improve Exception Handling** |  | 14d | 2006-08-22 | 2006-09-11 | 111 | 127.75d | 0d |  |  |  | 112h |
| 115 | 4.1.2.6.1 | Design |  | 2d | 2006-08-22 | 2006-08-24 |  | 127.75d | 0d |  |  | Dan Dumitru | 16h |
| 116 | 4.1.2.6.2 | Code/Unit Test |  | 12d | 2006-08-24 | 2006-09-11 | 115 | 127.75d |  |  |  | Dan Dumitru | 96h |
| 117 | 4.1.2.7 | **SDK build process always tries to start MYSQL** |  | 2d | 2006-09-11 | 2006-09-13 | 114 | 127.75d | 0d |  |  |  | 16h |
| 118 | 4.1.2.7.1 | Code/Unit Test |  | 2d | 2006-09-11 | 2006-09-13 |  | 127.75d |  |  |  | Dan Dumitru | 16h |
| 119 | 4.1.2.8 | **Expand Junit and automated testing framework** |  | 17d | 2006-08-31 | 2006-09-25 |  | 127.75d | 0d |  |  |  | 120h |
| 120 | 4.1.2.8.1 | Design |  | 1d | 2006-09-13 | 2006-09-14 | 117 | 127.75d | 0d |  |  | Dan Dumitru | 8h |
| 121 | 4.1.2.8.2 | Code/Unit Test |  | 7d | 2006-08-31 | 2006-09-11 | 105 | 137.75d |  |  |  | Satish Patel | 56h |
| 122 | 4.1.2.8.3 | Code/Unit Test |  | 7d | 2006-09-14 | 2006-09-25 | 120 | 127.75d |  |  |  | Dan Dumitru | 56h |
| 123 | 4.1.2.9 | Tag for QA | milestone | 0d | 2006-09-25 | 2006-09-25 | 119 | 127.75d |  |  |  |  |  |
| 124 | 4.2 | **QA Test Dev** |  | 9d | 2006-09-25 | 2006-10-06 |  | 127.75d | 0d |  |  |  | 216h |
| 125 | 4.2.1 | Execute Test |  | 9d | 2006-09-25 | 2006-10-06 | 89 | 129.75d | 0d |  |  | QA | 72h |
| 126 | 4.2.2 | Test Support |  | 9d | 2006-09-25 | 2006-10-06 | 89 | 127.75d | 0d |  |  | Satish Patel; Dan Dumitru | 144h |
| 127 | 4.3 | Deploy for Integration testing (QA) | milestone | 0d | 2006-09-22 | 2006-09-22 |  | 1d |  | start no earlier than 2006-09-22 | 2006-09-22 |  |  |
| 128 | 4.4 | Load Test |  | 10d | 2006-09-11 | 2006-09-25 | 124SS-10d | 167.75d |  |  |  |  |  |
| 129 | 4.5 | **Integration Test** |  | 15d | 2006-10-06 | 2006-10-27 |  | 127.75d |  |  |  |  | 240h |
| 130 | 4.5.1 | Execute Test |  | 15d | 2006-10-06 | 2006-10-27 | 125 | 129.75d | 0d |  |  | QA | 120h |
| 131 | 4.5.2 | Test Support |  | 15d | 2006-10-06 | 2006-10-27 | 126 | 127.75d | 0d |  |  | Satish Patel [50%]; Dan Dumitru [50%] | 120h |
| 132 | 4.6 | Integration System Testing Comple (QA) | milestone | 0d | 2006-10-12 | 2006-10-12 |  | 155d |  | start no earlier than 2006-10-12 |  |  |  |
| 133 | 4.7 | Deliver system test plan and results (C1.C9 draft 1) | milestone | 0d | 2006-10-17 | 2006-10-17 |  | 0d |  | start no earlier than 2006-10-17 | 2006-10-17 | QA |  |
| 134 | 4.8 | **Internal System Test** |  | 14d | 2006-10-27 | 2006-11-16 |  | 127.75d |  |  |  |  | 336h |
| 135 | 4.8.1 | Execution |  | 14d | 2006-10-27 | 2006-11-16 | 130 | 129.75d |  | start no earlier than 2006-10-13 |  | QA | 112h |
| 136 | 4.8.2 | Test Support |  | 14d | 2006-10-27 | 2006-11-16 | 131 | 127.75d | 0d | start no earlier than 2006-10-13 |  | Satish Patel; Dan Dumitru | 224h |
| 137 | 4.9 | Internal System Testing Complete (QA Tier) | milestone | 0d | 2006-11-01 | 2006-11-01 |  | 141d |  | start no earlier than 2006-11-01 |  |  |  |
| 138 | 4.10 | Push Candidate to Staging |  | 2d | 2006-11-16 | 2006-11-20 | 136 | 127.75d |  | start no earlier than 2006-11-02 |  | Satish Patel; Dan Dumitru | 32h |
| 139 | 4.11 | Release Candidate pushed to Stage Tier | milestone | 0d | 2006-11-03 | 2006-11-03 |  | 139d |  | start no earlier than 2006-11-03 |  |  |  |

| ID | WBS | Task | Type | Duration | Start | Finish | Predecessors | Total slack | Free slack | Constraint | Deadline | Resources | Work |
| --- | --- | --- | --- | --- | --- | --- | --- | --- | --- | --- | --- | --- | --- |
| 140 | 4.12 | **Regression/UAT Testing** |  | 18d | 2006-11-03 | 2006-11-28 |  | 106d |  |  |  |  | 432h |
| 141 | 4.12.1 | Execution |  | 18d | 2006-11-03 | 2006-11-28 |  | 121d |  | start no earlier than 2006-11-03 |  | SDK Users | 144h |
| 142 | 4.12.2 | Test Support |  | 18d | 2006-11-03 | 2006-11-28 |  | 106d | 0d | start no earlier than 2006-11-03 |  | Satish Patel; Dan Dumitru | 288h |
| 143 | 4.13 | UAT Complete | milestone | 0d | 2006-11-28 | 2006-11-28 |  | 122d |  | start no earlier than 2006-11-28 |  |  |  |
| 144 | 5 | **Transition** |  | 54.75d | 2006-10-06 | 2006-12-22 |  | 12.75d |  |  |  |  | 1016h |
| 145 | 5.1 | **Documentation** |  | 50.75d | 2006-10-06 | 2006-12-15 |  | 12.75d |  |  |  |  | 776h |
| 146 | 5.1.1 | Write Draft Documentation/ Update User Guide |  | 14d | 2006-10-06 | 2006-10-26 | 126 | 144.75d |  | start no earlier than 2006-09-25 |  | Satish Patel; Dan Dumitru | 224h |
| 147 | 5.1.2 | Draft Documentation/User Documentation Completed | milestone | 0d | 2006-10-12 | 2006-10-12 |  | 9d | 0d | start no earlier than 2006-10-12 |  |  |  |
| 148 | 5.1.3 | Deliver Technical and User Guide draft (C1.C10 Draft 1) | milestone | 0d | 2006-10-12 | 2006-10-12 | 147 | 9d |  |  | 2006-10-25 |  |  |
| 149 | 5.1.4 | Review Technical/User Docs |  | 21d | 2006-10-13 | 2006-11-10 |  | 121d | 0d | start no earlier than 2006-10-13 |  | Tech Writing NCICB | 168h |
| 150 | 5.1.5 | Review Technical/User Docs Complete | milestone | 0d | 2006-11-10 | 2006-11-10 |  | 134d |  | start no earlier than 2006-11-10 |  |  |  |
| 151 | 5.1.6 | Incorporate Comments to User Docs |  | 12d | 2006-11-13 | 2006-11-28 | 149 | 121d |  | start no earlier than 2006-11-13 |  | Satish Patel; Dan Dumitru | 192h |
| 152 | 5.1.7 | Incorporate Comments to User Docs Complete | milestone | 0d | 2006-11-28 | 2006-11-28 |  | 122d |  | start no earlier than 2006-11-28 |  |  |  |
| 153 | 5.1.8 | Finalize Documents |  | 24d | 2006-11-14 | 2006-12-15 |  | 108d |  | start no earlier than 2006-11-14 |  | Tech Writing NCICB | 192h |
| 154 | 5.1.9 | Final Version of User Documents Complete | milestone | 0d | 2006-12-15 | 2006-12-15 |  | 109d |  | start no earlier than 2006-12-15 |  |  |  |
| 155 | 5.2 | Staging |  | 15d | 2006-11-29 | 2006-12-19 | 142 | 106d |  | start no earlier than 2006-11-29 |  | Satish Patel; Dan Dumitru | 240h |
| 156 | 5.3 | Internal Staging Complete | milestone | 0d | 2006-12-19 | 2006-12-19 |  | 107d |  | start no earlier than 2006-12-19 |  |  |  |
| 157 | 5.4 | Push to Production | milestone | 0d | 2006-12-21 | 2006-12-21 |  | 105d |  | start no earlier than 2006-12-21 |  |  |  |
| 158 | 5.5 | Go Live | milestone | 0d | 2006-12-22 | 2006-12-22 |  | 104d |  | start no earlier than 2006-12-22 |  |  |  |
| 162 | 6 | **Ongoing tasks** |  | 260d | 2006-05-16 | 2007-05-16 |  | 0d |  |  |  |  | 4590h |
| 163 | 6.1 | Support for SDK users/Support caBIG community |  | 255d | 2006-05-23 | 2007-05-16 | 1 | 0d |  |  |  | Dan Dumitru [25%] | 510h |
| 164 | 6.2 | Maintain defect/feature list |  | 255d | 2006-05-23 | 2007-05-16 | 1 | 0d |  |  |  | QA | 2040h |
| 165 | 6.3 | Prioritize fixes and enhancements for next iteration |  | 255d | 2006-05-23 | 2007-05-16 | 1 | 0d |  |  |  | Charles Griffin | 2040h |
| 168 | 6.4 | **Monthly status reports** |  | 238d | 2006-06-08 | 2007-05-08 |  | 6d |  |  |  |  |  |
| 169 | 6.4.1 | Monthly status reports 1 |  | 1d | 2006-06-08 | 2006-06-08 |  | 243d |  | start no earlier than 2006-06-08 |  |  |  |
| 170 | 6.4.2 | Monthly status reports 2 |  | 1d | 2006-07-10 | 2006-07-10 |  | 222d |  | start no earlier than 2006-07-08 |  |  |  |
| 171 | 6.4.3 | Monthly status reports 3 |  | 1d | 2006-08-08 | 2006-08-08 |  | 201d |  | start no earlier than 2006-08-08 |  |  |  |
| 172 | 6.4.4 | Monthly status reports 4 |  | 1d | 2006-09-08 | 2006-09-08 |  | 178d |  | start no earlier than 2006-09-08 |  |  |  |
| 173 | 6.4.5 | Monthly status reports 5 |  | 1d | 2006-10-09 | 2006-10-09 |  | 157d |  | start no earlier than 2006-10-08 |  |  |  |
| 174 | 6.4.6 | Monthly status reports 6 |  | 1d | 2006-11-08 | 2006-11-08 |  | 135d |  | start no earlier than 2006-11-08 |  |  |  |
| 175 | 6.4.7 | Monthly status reports 7 |  | 1d | 2006-12-08 | 2006-12-08 |  | 113d |  | start no earlier than 2006-12-08 |  |  |  |
| 176 | 6.4.8 | Monthly status reports 8 |  | 1d | 2007-01-08 | 2007-01-08 |  | 92d |  | start no earlier than 2007-01-08 |  |  |  |
| 177 | 6.4.9 | Monthly status reports 9 |  | 1d | 2007-02-08 | 2007-02-08 |  | 69d |  | start no earlier than 2007-02-08 |  |  |  |
| 178 | 6.4.10 | Monthly status reports 10 |  | 1d | 2007-03-08 | 2007-03-08 |  | 49d |  | start no earlier than 2007-03-08 |  |  |  |
| 179 | 6.4.11 | Monthly status reports 11 |  | 1d | 2007-04-09 | 2007-04-09 |  | 27d |  | start no earlier than 2007-04-08 |  |  |  |
| 180 | 6.4.12 | Monthly status reports 12 |  | 1d | 2007-05-08 | 2007-05-08 |  | 6d |  | start no earlier than 2007-05-08 |  |  |  |

| ID | WBS | Task | Duration | Start | Finish | Total slack | Constraint |
| --- | --- | --- | --- | --- | --- | --- | --- |
| 181 | 6.5 | **Weekly Project Plan update** | 254d | 2006-05-16 | 2007-05-08 | 6d |  |
| 182 | 6.5.1 | Weekly Project Plan update 1 | 1d | 2006-05-16 | 2006-05-16 | 259d | start no earlier than 2006-05-16 |
| 183 | 6.5.2 | Weekly Project Plan update 2 | 1d | 2006-05-23 | 2006-05-23 | 254d | start no earlier than 2006-05-23 |
| 184 | 6.5.3 | Weekly Project Plan update 3 | 1d | 2006-05-30 | 2006-05-30 | 250d | start no earlier than 2006-05-30 |
| 185 | 6.5.4 | Weekly Project Plan update 4 | 1d | 2006-06-06 | 2006-06-06 | 245d | start no earlier than 2006-06-06 |
| 186 | 6.5.5 | Weekly Project Plan update 5 | 1d | 2006-06-13 | 2006-06-13 | 240d | start no earlier than 2006-06-13 |
| 187 | 6.5.6 | Weekly Project Plan update 6 | 1d | 2006-06-20 | 2006-06-20 | 235d | start no earlier than 2006-06-20 |
| 188 | 6.5.7 | Weekly Project Plan update 7 | 1d | 2006-06-27 | 2006-06-27 | 230d | start no earlier than 2006-06-27 |
| 189 | 6.5.8 | Weekly Project Plan update 8 | 1d | 2006-07-05 | 2006-07-05 | 225d | start no earlier than 2006-07-04 |
| 190 | 6.5.9 | Weekly Project Plan update 9 | 1d | 2006-07-11 | 2006-07-11 | 221d | start no earlier than 2006-07-11 |
| 191 | 6.5.10 | Weekly Project Plan update 10 | 1d | 2006-07-18 | 2006-07-18 | 216d | start no earlier than 2006-07-18 |
| 192 | 6.5.11 | Weekly Project Plan update 11 | 1d | 2006-07-25 | 2006-07-25 | 211d | start no earlier than 2006-07-25 |
| 193 | 6.5.12 | Weekly Project Plan update 12 | 1d | 2006-08-01 | 2006-08-01 | 206d | start no earlier than 2006-08-01 |
| 194 | 6.5.13 | Weekly Project Plan update 13 | 1d | 2006-08-08 | 2006-08-08 | 201d | start no earlier than 2006-08-08 |
| 195 | 6.5.14 | Weekly Project Plan update 14 | 1d | 2006-08-15 | 2006-08-15 | 196d | start no earlier than 2006-08-15 |
| 196 | 6.5.15 | Weekly Project Plan update 15 | 1d | 2006-08-22 | 2006-08-22 | 191d | start no earlier than 2006-08-22 |
| 197 | 6.5.16 | Weekly Project Plan update 16 | 1d | 2006-08-29 | 2006-08-29 | 186d | start no earlier than 2006-08-29 |
| 198 | 6.5.17 | Weekly Project Plan update 17 | 1d | 2006-09-05 | 2006-09-05 | 181d | start no earlier than 2006-09-05 |
| 199 | 6.5.18 | Weekly Project Plan update 18 | 1d | 2006-09-12 | 2006-09-12 | 176d | start no earlier than 2006-09-12 |
| 200 | 6.5.19 | Weekly Project Plan update 19 | 1d | 2006-09-19 | 2006-09-19 | 171d | start no earlier than 2006-09-19 |
| 201 | 6.5.20 | Weekly Project Plan update 20 | 1d | 2006-09-26 | 2006-09-26 | 166d | start no earlier than 2006-09-26 |
| 202 | 6.5.21 | Weekly Project Plan update 21 | 1d | 2006-10-03 | 2006-10-03 | 161d | start no earlier than 2006-10-03 |
| 203 | 6.5.22 | Weekly Project Plan update 22 | 1d | 2006-10-10 | 2006-10-10 | 156d | start no earlier than 2006-10-10 |
| 204 | 6.5.23 | Weekly Project Plan update 23 | 1d | 2006-10-17 | 2006-10-17 | 151d | start no earlier than 2006-10-17 |
| 205 | 6.5.24 | Weekly Project Plan update 24 | 1d | 2006-10-24 | 2006-10-24 | 146d | start no earlier than 2006-10-24 |
| 206 | 6.5.25 | Weekly Project Plan update 25 | 1d | 2006-10-31 | 2006-10-31 | 141d | start no earlier than 2006-10-31 |
| 207 | 6.5.26 | Weekly Project Plan update 26 | 1d | 2006-11-07 | 2006-11-07 | 136d | start no earlier than 2006-11-07 |
| 208 | 6.5.27 | Weekly Project Plan update 27 | 1d | 2006-11-14 | 2006-11-14 | 131d | start no earlier than 2006-11-14 |
| 209 | 6.5.28 | Weekly Project Plan update 28 | 1d | 2006-11-21 | 2006-11-21 | 126d | start no earlier than 2006-11-21 |
| 210 | 6.5.29 | Weekly Project Plan update 29 | 1d | 2006-11-28 | 2006-11-28 | 121d | start no earlier than 2006-11-28 |
| 211 | 6.5.30 | Weekly Project Plan update 30 | 1d | 2006-12-05 | 2006-12-05 | 116d | start no earlier than 2006-12-05 |
| 212 | 6.5.31 | Weekly Project Plan update 31 | 1d | 2006-12-12 | 2006-12-12 | 111d | start no earlier than 2006-12-12 |
| 213 | 6.5.32 | Weekly Project Plan update 32 | 1d | 2006-12-19 | 2006-12-19 | 106d | start no earlier than 2006-12-19 |
| 214 | 6.5.33 | Weekly Project Plan update 33 | 1d | 2006-12-26 | 2006-12-26 | 101d | start no earlier than 2006-12-26 |
| 215 | 6.5.34 | Weekly Project Plan update 34 | 1d | 2007-01-02 | 2007-01-02 | 96d | start no earlier than 2007-01-02 |
| 216 | 6.5.35 | Weekly Project Plan update 35 | 1d | 2007-01-09 | 2007-01-09 | 91d | start no earlier than 2007-01-09 |
| 217 | 6.5.36 | Weekly Project Plan update 36 | 1d | 2007-01-16 | 2007-01-16 | 86d | start no earlier than 2007-01-16 |
| 218 | 6.5.37 | Weekly Project Plan update 37 | 1d | 2007-01-23 | 2007-01-23 | 81d | start no earlier than 2007-01-23 |
| 219 | 6.5.38 | Weekly Project Plan update 38 | 1d | 2007-01-30 | 2007-01-30 | 76d | start no earlier than 2007-01-30 |
| 220 | 6.5.39 | Weekly Project Plan update 39 | 1d | 2007-02-06 | 2007-02-06 | 71d | start no earlier than 2007-02-06 |
| 221 | 6.5.40 | Weekly Project Plan update 40 | 1d | 2007-02-13 | 2007-02-13 | 66d | start no earlier than 2007-02-13 |
| 222 | 6.5.41 | Weekly Project Plan update 41 | 1d | 2007-02-20 | 2007-02-20 | 61d | start no earlier than 2007-02-20 |
| 223 | 6.5.42 | Weekly Project Plan update 42 | 1d | 2007-02-27 | 2007-02-27 | 56d | start no earlier than 2007-02-27 |
| 224 | 6.5.43 | Weekly Project Plan update 43 | 1d | 2007-03-06 | 2007-03-06 | 51d | start no earlier than 2007-03-06 |
| 225 | 6.5.44 | Weekly Project Plan update 44 | 1d | 2007-03-13 | 2007-03-13 | 46d | start no earlier than 2007-03-13 |
| 226 | 6.5.45 | Weekly Project Plan update 45 | 1d | 2007-03-20 | 2007-03-20 | 41d | start no earlier than 2007-03-20 |
| 227 | 6.5.46 | Weekly Project Plan update 46 | 1d | 2007-03-27 | 2007-03-27 | 36d | start no earlier than 2007-03-27 |
| 228 | 6.5.47 | Weekly Project Plan update 47 | 1d | 2007-04-03 | 2007-04-03 | 31d | start no earlier than 2007-04-03 |
| 229 | 6.5.48 | Weekly Project Plan update 48 | 1d | 2007-04-10 | 2007-04-10 | 26d | start no earlier than 2007-04-10 |
| 230 | 6.5.49 | Weekly Project Plan update 49 | 1d | 2007-04-17 | 2007-04-17 | 21d | start no earlier than 2007-04-17 |
| 231 | 6.5.50 | Weekly Project Plan update 50 | 1d | 2007-04-24 | 2007-04-24 | 16d | start no earlier than 2007-04-24 |
| 232 | 6.5.51 | Weekly Project Plan update 51 | 1d | 2007-05-01 | 2007-05-01 | 11d | start no earlier than 2007-05-01 |
| 233 | 6.5.52 | Weekly Project Plan update 52 | 1d | 2007-05-08 | 2007-05-08 | 6d | start no earlier than 2007-05-08 |
